# CRONOGRAMA DE EJECUCION FISICA_ ACTUALIZADO

Schedule from MS Project, 2018-04-16 to 2019-12-06, status date 2018-05-26.
Toshiba

## Calendars

- TIC_Chincheros: Mon-Fri 09:00-13:00, 15:00-19:00; Sat-Sun off. Exceptions (off unless hours are given): 2019-05-01 (Dia del trabajo).

## Resources

| Resource | Notes |
| --- | --- |
| Ing. de Sistemas e Informatica | Jefe Cuadrilla Informática, compuesto por 7 trabajadores. |
| Técnico en Informática |  |
| Especialista configuración de Servidores | Jefe responsable de la instalación y configuración del Servidor, debe garantizar la interconectividad entre el servidor, access point y equipos portátiles. |
| Profesional Especialista TIC |  |
| Coordinador de Proyecto |  |
| Unid. Logistica |  |
| Coordinador Capacitación |  |
| Monitor |  |
| Asesor Pedagógico |  |
| Asistente Técnico de Proyecto |  |

## Schedule

| ID | WBS | Task | Type | Duration | Start | Finish | Predecessors | Total slack | Free slack | Constraint | Resources | Work |
| --- | --- | --- | --- | --- | --- | --- | --- | --- | --- | --- | --- | --- |
| 1 | 1 | **Proyecto: MEJORAMIENTO DE APLICACIÓN TIC EN II.EE UGEL - CHINCHEROS** |  | 429d | 2018-04-16 | 2019-12-06 |  |  |  |  |  | 17808h |
| 2 | 1.1 | **ESTUDIOS DEFINITIVOS** |  | 88d | 2018-04-16 | 2018-08-15 |  | 0d |  |  |  |  |
| 3 | 1.1.1 | Elaboracion del Expediente Técnico | manual | 77d | 2018-04-16 | 2018-07-31 |  |  |  |  |  |  |
| 4 | 1.1.2 | Revisión y aprobacion de Expediente Técnico |  | 4d | 2018-08-10 | 2018-08-15 | 3FS+7d | 13d | 0d | finish no earlier than 2018-08-15 |  |  |
| 5 | 1.2 | **ACTIVIDADES PRELIMINARES** |  | 30d | 2018-08-16 | 2018-09-26 |  |  |  |  |  | 384h |
| 6 | 1.2.1 | Selección y contratación de Personal |  | 5d | 2018-08-17 | 2018-08-23 | 4FS+1d | 13d | 0d |  |  |  |
| 7 | 1.2.2 | Revision de expediente tecnico |  | 5d | 2018-08-24 | 2018-08-30 | 6 | 13d | 0d |  | Coordinador de Proyecto; Profesional Especialista TIC | 80h |
| 8 | 1.2.3 | Compatibilizacion y socializacion del Proyecto | manual | 6d | 2018-08-31 | 2018-09-07 | 7 |  |  |  | Coordinador de Proyecto; Profesional Especialista TIC; Asistente Técnico de Proyecto | 144h |
| 9 | 1.2.4 | Elaboracion de Terminos de Referencia |  | 10d | 2018-09-10 | 2018-09-21 |  | 4d | 0d | finish no earlier than 2018-09-21 | Coordinador Capacitación; Profesional Especialista TIC | 160h |
| 10 | 1.3 | **ADQUISICION DE MATERIALES Y EQUIPOS** |  | 94d | 2018-09-24 | 2019-01-31 | 9 |  |  |  |  | 5520h |
| 11 | 1.3.1 | Adquisicion de suministros para trabajos preliminares |  | 30d | 2018-09-24 | 2018-11-02 |  | 64d |  |  | Coordinador de Proyecto; Unid. Logistica | 480h |
| 12 | 1.3.2 | Adquisicion de equipos de computo y multimedia |  | 90d | 2018-09-24 | 2019-01-25 |  | 4d | 0d |  | Coordinador de Proyecto; Unid. Logistica | 1440h |
| 13 | 1.3.3 | Adquisicion de Sistema de Alarma |  | 30d | 2018-09-24 | 2018-11-02 |  | 64d |  |  | Coordinador de Proyecto; Unid. Logistica | 480h |
| 14 | 1.3.4 | Adquisicion de suministros para red de comunicaciones |  | 45d | 2018-09-24 | 2018-11-23 |  | 49d |  |  | Coordinador de Proyecto; Unid. Logistica | 720h |
| 15 | 1.3.5 | Adquisicion de suministros para proteccion electrica |  | 45d | 2018-09-24 | 2018-11-23 |  | 49d | 0d |  | Coordinador de Proyecto; Unid. Logistica | 720h |
| 16 | 1.3.6 | Adquisicion de suministros para instalaciones electricas |  | 45d | 2018-09-24 | 2018-11-23 |  | 49d |  |  | Coordinador de Proyecto; Unid. Logistica | 720h |
| 17 | 1.3.7 | Adquisicion de suministros para torres de elevación |  | 30d | 2018-09-24 | 2018-11-02 |  | 64d |  |  | Coordinador de Proyecto; Unid. Logistica | 480h |
| 18 | 1.3.8 | Adquisicion de materiales y equipos de capacitación |  | 30d | 2018-09-24 | 2018-11-02 |  | 64d |  |  | Coordinador de Proyecto; Unid. Logistica | 480h |
| 19 | 1.4 | **INSTALACION Y MONTAJE DE EQUIPOS** |  | 83d | 2018-11-26 | 2019-03-20 | 15 | 186d |  |  |  | 11584h |
| 20 | 1.4.1 | Traslado de materiales y equipos de almacen a Instituciones Educativas |  | 12d | 2018-11-26 | 2018-12-11 |  | 222d | 0d |  | Asistente Técnico de Proyecto; Coordinador de Proyecto; Profesional Especialista TIC | 288h |
| 21 | 1.4.2 | Instalacion y configuración de plataforma educativa virtual |  | 5d | 2019-01-21 | 2019-01-25 | 12FF | 224d |  |  | Especialista configuración de Servidores; Profesional Especialista TIC | 80h |
| 22 | 1.4.3 | **RUTA 1** |  | 39d | 2018-12-11 | 2019-02-04 | 20 | 218d |  |  |  | 3521h |
| 23 | 1.4.3.1 | **EQUIPO 1** |  | 38d | 2018-12-11 | 2019-02-01 |  | 219d |  |  |  | 1166h |
| 24 | 1.4.3.1.1 | II.EE. MIGUEL GRAU SEMINARIO |  | 32d | 2018-12-11 | 2019-01-24 |  | 225d |  |  |  | 267h |
| 25 | 1.4.3.1.2 | II.EE. LINO QUINTANILLA |  | 28d | 2018-12-17 | 2019-01-23 |  | 226d |  |  |  | 223h |
| 26 | 1.4.3.1.3 | II.EE. JOSE CARLOS MARIETEGUI |  | 25d | 2018-12-24 | 2019-01-25 |  | 224d |  |  |  | 223h |
| 27 | 1.4.3.1.4 | II.EE. INCA GARCILAZO DE LA VEGA |  | 22d | 2018-12-31 | 2019-01-29 |  | 222d |  |  |  | 223h |
| 28 | 1.4.3.1.5 | II.EE. JUANA AMBIA LUDEÑA |  | 18d | 2019-01-07 | 2019-01-28 |  | 221d |  |  |  | 223h |
| 29 | 1.4.3.1.6 | II.EE. CULLUNI IZQUIERDO |  | 15d | 2019-01-14 | 2019-02-01 |  | 219d |  |  |  | 7h |

| ID | WBS | Task | Duration | Start | Finish | Predecessors | Total slack | Work |
| --- | --- | --- | --- | --- | --- | --- | --- | --- |
| 30 | 1.4.3.2 | **EQUIPO 2** | 36d | 2018-12-11 | 2019-01-30 |  | 221d | 1115h |
| 31 | 1.4.3.2.1 | II.EE. CRFA NUESTRA SEÑORA DE COCHARCAS | 32d | 2018-12-11 | 2019-01-24 |  | 225d | 223h |
| 32 | 1.4.3.2.2 | II.EE. JORGE CHAVEZ | 28d | 2018-12-17 | 2019-01-23 |  | 226d | 223h |
| 33 | 1.4.3.2.3 | II.EE. URUCANCHA | 25d | 2018-12-24 | 2019-01-25 |  | 224d | 223h |
| 34 | 1.4.3.2.4 | II.EE. JAVIER HERAUD PEREZ | 22d | 2018-12-31 | 2019-01-29 |  | 222d | 223h |
| 35 | 1.4.3.2.5 | II.EE. OSCOLLO | 18d | 2019-01-07 | 2019-01-30 |  | 221d | 223h |
| 36 | 1.4.3.3 | **EQUIPO 3** | 39d | 2018-12-11 | 2019-02-04 |  | 218d | 1240h |
| 37 | 1.4.3.3.1 | II.EE. TUPAC AMARU | 35d | 2018-12-11 | 2019-01-29 |  | 222d | 344h |
| 38 | 1.4.3.3.2 | II.EE. SAN JUAN BAUTISTA | 31d | 2018-12-17 | 2019-01-28 |  | 223d | 227h |
| 39 | 1.4.3.3.3 | II.EE. CIRO ALEGRIA | 27d | 2018-12-24 | 2019-01-29 |  | 222d | 223h |
| 40 | 1.4.3.3.4 | II.EE. LEONCIO PRADO | 24d | 2018-12-31 | 2019-01-31 |  | 220d | 223h |
| 41 | 1.4.3.3.5 | II.EE. ALFONSO RODRIGUEZ NAJARRO | 21d | 2019-01-07 | 2019-02-04 |  | 218d | 223h |
| 42 | 1.4.4 | **RUTA 2** | 43d | 2019-01-14 | 2019-03-13 | 20 | 191d | 4034h |
| 43 | 1.4.4.1 | **EQUIPO 1** | 43d | 2019-01-14 | 2019-03-13 |  | 191d | 1706h |
| 44 | 1.4.4.1.1 | II.EE. JOSE MARIA ARGUEDAS | 20d | 2019-01-14 | 2019-02-08 |  | 214d | 520h |
| 45 | 1.4.4.1.2 | II.EE. DANIEL ALCIDES CARRION | 16d | 2019-01-28 | 2019-02-18 |  | 208d | 223h |
| 46 | 1.4.4.1.3 | II.EE. LAS AMERICAS | 14d | 2019-02-04 | 2019-02-21 |  | 205d | 223h |
| 47 | 1.4.4.1.4 | II.EE. RICARDO PALMA | 15d | 2019-02-11 | 2019-03-01 |  | 199d | 294h |
| 48 | 1.4.4.1.5 | II.EE. CRFA JATUN RURUPA | 14d | 2019-02-18 | 2019-03-07 |  | 195d | 223h |
| 49 | 1.4.4.1.6 | II.EE. SAN PEDRO | 13d | 2019-02-25 | 2019-03-13 |  | 191d | 223h |
| 50 | 1.4.4.2 | **EQUIPO 2** | 33d | 2019-01-14 | 2019-02-27 |  | 201d | 1209h |
| 51 | 1.4.4.2.1 | II.EE. CARLOS NORIEGA JIMENEZ | 17d | 2019-01-14 | 2019-02-05 |  | 217d | 223h |
| 52 | 1.4.4.2.2 | II.EE. MANUEL SCORZA | 15d | 2019-01-21 | 2019-02-08 |  | 214d | 223h |
| 53 | 1.4.4.2.3 | II.EE. LOS LIBERTADORES | 16d | 2019-01-28 | 2019-02-18 |  | 208d | 306h |
| 54 | 1.4.4.2.4 | II.EE. HUARIBAMBA | 15d | 2019-02-04 | 2019-02-22 |  | 204d | 230h |
| 55 | 1.4.4.2.5 | II.EE. SARAHUARCAY | 13d | 2019-02-11 | 2019-02-27 |  | 201d | 227h |

| ID | WBS | Task | Type | Duration | Start | Finish | Predecessors | Total slack | Free slack | Constraint | Work |
| --- | --- | --- | --- | --- | --- | --- | --- | --- | --- | --- | --- |
| 56 | 1.4.4.3 | **EQUIPO 3** |  | 32d | 2019-01-14 | 2019-02-26 |  | 202d |  |  | 1119h |
| 57 | 1.4.4.3.1 | II.EE. FERNANDO BELAUNDE TERRY |  | 19d | 2019-01-14 | 2019-02-07 |  | 215d |  |  | 298h |
| 58 | 1.4.4.3.2 | II.EE. JUAN VELASCO ALVARADO |  | 17d | 2019-01-21 | 2019-02-12 |  | 212d |  |  | 227h |
| 59 | 1.4.4.3.3 | II.EE. JOSE BENINGO SAMANEZ OCAMPO |  | 20d | 2019-01-28 | 2019-02-22 |  | 204d |  |  | 342h |
| 60 | 1.4.4.3.4 | II.EE. MANUEL GONZALES PRADA |  | 17d | 2019-02-04 | 2019-02-26 |  | 202d |  |  | 252h |
| 61 | 1.4.5 | **RUTA 3** |  | 38d | 2019-01-28 | 2019-03-20 | 20 | 186d |  |  | 3661h |
| 62 | 1.4.5.1 | **EQUIPO 1** |  | 38d | 2019-01-28 | 2019-03-20 |  | 186d | 0d |  | 1483h |
| 63 | 1.4.5.1.1 | II.EE. JACINTO PALOMINO CORDOVA |  | 17d | 2019-01-28 | 2019-02-19 |  | 207d |  |  | 520h |
| 64 | 1.4.5.1.2 | II.EE. VICTOR RAUL HAYA DE LA TORRE |  | 14d | 2019-02-04 | 2019-02-21 |  | 205d |  |  | 223h |
| 65 | 1.4.5.1.3 | II.EE. CRISTINE HART |  | 11d | 2019-02-11 | 2019-02-25 |  | 203d |  |  | 223h |
| 66 | 1.4.5.1.4 | II.EE. PORVENIR |  | 19d | 2019-02-18 | 2019-03-14 |  | 190d |  |  | 294h |
| 67 | 1.4.5.1.5 | II.EE. SANTA ROSA DE ONGOY |  | 18d | 2019-02-25 | 2019-03-20 |  | 186d |  |  | 223h |
| 68 | 1.4.5.2 | **EQUIPO 2** |  | 14d | 2019-01-28 | 2019-02-14 | 62SS | 210d | 0d |  | 1083h |
| 69 | 1.4.5.2.1 | II.EE. LOS MARTIRES |  | 4d | 2019-01-28 | 2019-01-31 |  | 220d |  |  | 231h |
| 70 | 1.4.5.2.2 | II.EE. JOSE MARIA FLORES |  | 5d | 2019-01-28 | 2019-02-01 |  | 219d |  |  | 316h |
| 71 | 1.4.5.2.3 | II.EE. TECNICO INDUSTRIAL |  | 5d | 2019-02-04 | 2019-02-08 |  | 214d |  |  | 306h |
| 72 | 1.4.5.2.4 | II.EE. LUIS ALBERTO SANCHEZ |  | 4d | 2019-02-11 | 2019-02-14 |  | 210d |  |  | 230h |
| 73 | 1.4.5.3 | **EQUIPO 3** |  | 17d | 2019-01-28 | 2019-02-19 | 68SS | 207d |  |  | 1095h |
| 74 | 1.4.5.3.1 | II.EE. ALAYPAMPA |  | 5d | 2019-01-28 | 2019-02-01 |  | 219d |  |  | 298h |
| 75 | 1.4.5.3.2 | II.EE. ANDRES AVELINO CACERES |  | 4d | 2019-01-28 | 2019-01-31 |  | 220d |  |  | 227h |
| 76 | 1.4.5.3.3 | II.EE. JORGE BASADRE GOHMANN |  | 6d | 2019-02-04 | 2019-02-11 |  | 213d |  |  | 318h |
| 77 | 1.4.5.3.4 | II.EE. CESAR VALLEJO |  | 7d | 2019-02-11 | 2019-02-19 |  | 207d |  |  | 252h |
| 78 | 1.5 | CRONOGRAMA DE CAPACITACIONES_FF-14-2 |  | 157d | 2019-05-01 | 2019-12-05 |  | 0d |  |  |  |
| 79 | 1.6 | CAPACITACION, ASISTENCIA TECNICA, GESTION PEDAGOGICA | manual | 157d | 2019-05-01 | 2019-12-05 |  |  |  |  |  |
| 80 | 1.7 | PASANTIAS y BECAS |  | 20d | 2019-05-02 | 2019-05-29 |  | 137d |  | start no earlier than 2019-05-01 |  |
| 81 | 1.8 | EVALUACION DE RESULTADOS |  | 22d | 2019-05-31 | 2019-07-01 |  | 114d |  | start no earlier than 2019-05-31 |  |

| ID | WBS | Task | Duration | Start | Finish | Predecessors | Total slack | Constraint | Resources | Work |
| --- | --- | --- | --- | --- | --- | --- | --- | --- | --- | --- |
| 82 | 1.9 | **CIERRE DE PROYECTO** | 44d | 2019-07-08 | 2019-09-05 |  |  |  |  | 320h |
| 83 | 1.9.1 | Preliquidación de proyecto | 15d | 2019-07-08 | 2019-07-26 |  | 0d | start no earlier than 2019-07-08 | Coordinador de Proyecto; Profesional Especialista TIC | 240h |
| 84 | 1.9.2 | Elaboracion y presentacion de informe final | 5d | 2019-07-29 | 2019-08-02 | 83 | 0d |  | Coordinador de Proyecto; Profesional Especialista TIC | 80h |
| 85 | 1.9.3 | Liquidacion de Proyecto | 24d | 2019-08-05 | 2019-09-05 | 84 | 0d |  |  |  |
