# II.EE. JOSE MARIA ARGUEDAS

Schedule from MS Project, 2019-01-14 to 2019-02-06.
GRA

## Calendars

- TIC_Chincheros: Mon-Fri 09:00-13:00, 15:00-19:00; Sat 08:00-14:00; Sun off.

## Resources

| Resource | Notes |
| --- | --- |
| Ing. de Sistemas e Informatica | Jefe Cuadrilla Informática, compuesto por 7 trabajadores. |
| Técnico en Informática |  |
| Oficial 1 Informatica |  |
| Operario 1 Informatica |  |
| Peón 1 Informatica |  |
| Peón 2 Informatica |  |
| Peón 3 Informatica |  |
| Ing.Electricista | Jefe Cuadrilla Electricista, compuesto por 7 trabajadores. |
| Técnico Electricista |  |
| Oficial 1 Electricista |  |
| Operario 1 Electricista |  |
| Peón 1 Electricista |  |
| Peón 2 Electricista |  |
| Peón 3 Electricista |  |
| Especialista configuración de Servidores | Jefe responsable de la instalación y configuración del Servidor, debe garantizar la interconectividad entre el servidor, access point y equipos portátiles. |
| Profesional Especialista |  |

## Schedule

| ID | WBS | Task | Duration | Start | Finish | Predecessors | Total slack | Free slack | Constraint | Resources | Work |
| --- | --- | --- | --- | --- | --- | --- | --- | --- | --- | --- | --- |
| 1 | 1 | **II.EE. JOSE MARIA ARGUEDAS** | 20d | 2019-01-14 09:00 | 2019-02-06 17:00 |  |  |  |  |  | 520h |
| 2 | 1.1 | **INSTALACION ELECTRICA Y REDES DE COMUNICACIÓN** | 5.62d | 2019-01-14 09:00 | 2019-01-19 13:00 |  | 14.38d |  |  |  | 262h |
| 3 | 1.1.1 | **1.12.2 Montaje de trabajos preliminares** | 0.62d | 2019-01-14 09:00 | 2019-01-14 16:00 |  | 19.38d | 0d |  |  | 10h |
| 4 | 1.1.1.1 | 1.12.2.1 Instalación de cartel de obra | 3h | 2019-01-14 09:00 | 2019-01-14 12:00 |  | 19.38d | 0d | start no earlier than 2014-06-20 09:00 | Operario 1 Electricista; Peón 1 Electricista | 6h |
| 5 | 1.1.1.2 | 1.12.2.2 Instalación de placa recordatoria | 2h | 2019-01-14 12:00 | 2019-01-14 16:00 | 4 | 19.38d |  |  | Operario 1 Electricista; Peón 1 Electricista | 4h |
| 6 | 1.1.2 | **1.10.2 Montaje de torre de elevación** | 2.75d | 2019-01-14 09:00 | 2019-01-16 17:00 | 3SS | 17.25d |  |  |  | 34h |
| 7 | 1.1.2.1 | 1.10.2.1 Excavación de Hoyo para la base de torre | 6h | 2019-01-14 09:00 | 2019-01-14 17:00 |  | 17.25d | 0d |  | Peón 2 Electricista | 6h |
| 8 | 1.1.2.2 | 1.10.2.2 Excavación de Hoyo para los anclajes de la torre | 4h | 2019-01-14 17:00 | 2019-01-15 11:00 | 7 | 17.25d | 0d |  | Peón 3 Electricista | 4h |
| 9 | 1.1.2.3 | 1.10.2.3 Encofrado de base ,anclaje y armado de estructura de fierro en forma de canastilla y vaciado | 4h | 2019-01-15 11:00 | 2019-01-15 17:00 | 8 | 17.25d | 0d |  | Oficial 1 Electricista; Peón 1 Electricista | 8h |
| 10 | 1.1.2.4 | 1.10.2.4 Ensamblaje de torre y accesorios | 1d | 2019-01-15 17:00 | 2019-01-16 17:00 | 9 | 17.25d |  |  | Operario 1 Electricista; Peón 2 Electricista | 16h |
| 11 | 1.1.3 | **1.4.2. Instalación de la red de comunicaciones** | 5.62d | 2019-01-14 09:00 | 2019-01-19 13:00 | 3SS | 14.38d |  |  |  | 90h |
| 12 | 1.1.3.1 | 1.4.2.1 Instalacion de gabinete de comunicación | 3h | 2019-01-14 09:00 | 2019-01-14 12:00 |  | 14.38d | 0d |  | Operario 1 Informatica; Peón 1 Informatica | 6h |
| 13 | 1.1.3.2 | 1.4.2.2 Colocacion de tubos canaletas y cajas de paso | 16h | 2019-01-14 12:00 | 2019-01-16 12:00 | 12 | 14.38d | 0d |  | Oficial 1 Informatica; Peón 2 Informatica | 32h |
| 14 | 1.1.3.3 | 1.4.2.3 Instalación y conectorizacion de cable F/UTP | 16h | 2019-01-16 12:00 | 2019-01-18 12:00 | 13 | 14.38d | 0d |  | Oficial 1 Informatica; Operario 1 Informatica | 32h |
| 15 | 1.1.3.4 | 1.4.2.4 Montaje y configuracion de switch y Access Point | 10h | 2019-01-18 12:00 | 2019-01-19 13:00 | 14 | 14.38d |  |  | Profesional Especialista; Oficial 1 Informatica | 20h |
| 16 | 1.1.4 | **1.8.2 Montaje de circuito y tablero electrico** | 1d | 2019-01-14 09:00 | 2019-01-14 19:00 | 3SS | 16d | 0d |  |  | 24h |
| 17 | 1.1.4.1 | 1.8.2.1 Instalación del circuito electrico para el servidor - estacion de carga de laptop | 1d | 2019-01-14 09:00 | 2019-01-14 19:00 |  | 16d |  |  | Operario 1 Electricista; Peón 3 Electricista | 16h |
| 18 | 1.1.4.2 | 1.8.2.2 Instalacion de tablero metálico | 4h | 2019-01-14 09:00 | 2019-01-14 13:00 |  | 16.5d |  |  | Operario 1 Electricista; Peón 2 Electricista | 8h |
| 19 | 1.1.5 | **1.9.2 Montaje de circuito electrico para proyectores** | 3d | 2019-01-15 09:00 | 2019-01-17 19:00 | 16 | 16d |  |  |  | 48h |
| 20 | 1.1.5.1 | 1.9.2.1 Montaje de circuito eléctrico para proyectores | 24h | 2019-01-15 09:00 | 2019-01-17 19:00 |  | 16d |  |  | Peón 1 Electricista; Operario 1 Electricista | 48h |
| 21 | 1.1.6 | **1.6.2 Montaje de puesta a tierra para pararayos** | 1.75d | 2019-01-14 09:00 | 2019-01-15 17:00 | 3SS | 16.25d | 0d |  |  | 26h |
| 22 | 1.1.6.1 | 1.6.2.1 Excavación de Hoyo para Puesta a Tierra | 4h | 2019-01-14 09:00 | 2019-01-14 13:00 |  | 16.25d | 0d |  | Operario 1 Electricista; Peón 1 Electricista | 8h |
| 23 | 1.1.6.2 | 1.6.2.2 Relleno y compactacion para puesta a tierra | 4h | 2019-01-14 15:00 | 2019-01-14 19:00 | 22 | 16.25d | 0d |  | Operario 1 Electricista; Peón 2 Electricista | 8h |
| 24 | 1.1.6.3 | 1.6.2.3 Instalación del Sistema de Puesta a Tierra | 4h | 2019-01-15 09:00 | 2019-01-15 13:00 | 23 | 16.25d | 0d |  | Operario 1 Electricista; Peón 2 Electricista | 8h |
| 25 | 1.1.6.4 | 1.6.2.4 Revisión y pruebas eléctricas | 2h | 2019-01-15 15:00 | 2019-01-15 17:00 | 24 | 16.25d |  |  | Ing.Electricista | 2h |

| ID | WBS | Task | Duration | Start | Finish | Predecessors | Total slack | Free slack | Constraint | Resources | Work |
| --- | --- | --- | --- | --- | --- | --- | --- | --- | --- | --- | --- |
| 26 | 1.1.7 | **1.7.2. Montaje de puesta a tierra para el Servidor** | 2d | 2019-01-15 17:00 | 2019-01-17 17:00 | 21 | 16.25d |  |  |  | 30h |
| 27 | 1.1.7.1 | 1.7.2.1 Excavación de Hoyo para Puesta a Tierra | 4h | 2019-01-15 17:00 | 2019-01-16 11:00 |  | 16.25d | 0d |  | Operario 1 Electricista; Peón 1 Electricista | 8h |
| 28 | 1.1.7.2 | 1.7.2.2 Relleno y compactacion para puesta a tierra | 4h | 2019-01-16 11:00 | 2019-01-16 17:00 | 27 | 16.25d | 0d |  | Operario 1 Electricista; Peón 2 Electricista | 8h |
| 29 | 1.1.7.3 | 1.7.2.3 Instalación del Sistema de Puesta a Tierra | 4h | 2019-01-16 17:00 | 2019-01-17 11:00 | 28 | 16.25d | 0d |  | Operario 1 Electricista; Peón 1 Electricista | 8h |
| 30 | 1.1.7.4 | 1.7.2.4 Instalación de conductor desde puesta a tierra a tablero principal | 2h | 2019-01-17 11:00 | 2019-01-17 13:00 | 29 | 16.25d | 0d |  | Operario 1 Electricista; Peón 2 Electricista | 4h |
| 31 | 1.1.7.5 | 1.7.2.5 Revisión y pruebas eléctricas | 2h | 2019-01-17 15:00 | 2019-01-17 17:00 | 30 | 16.25d |  |  | Ing.Electricista | 2h |
| 32 | 1.2 | **MONTAJE Y CONFIGURACION** | 8.5d | 2019-01-14 09:00 | 2019-01-23 17:00 |  | 11.5d |  |  |  | 258h |
| 33 | 1.2.1 | **1.1.2 MONTAJE Y CONFIGURACION DE EQUIPOS DE COMPUTO** | 7.5d | 2019-01-14 09:00 | 2019-01-22 17:00 |  | 11.5d |  |  |  | 128h |
| 34 | 1.2.1.1 | 1.1.2.1 Configuración de computadoras portatiles | 60h | 2019-01-14 09:00 | 2019-01-22 17:00 |  | 11.5d | 0d | start no earlier than 2014-07-03 09:00 | Operario 1 Informatica; Técnico en Informática | 120h |
| 35 | 1.2.1.2 | 1.1.2.2 Acondicionamiento y montaje de servidor | 4h | 2019-01-14 09:00 | 2019-01-14 13:00 | 34SS | 19.5d |  | start no earlier than 2014-06-17 09:00 | Operario 1 Informatica; Técnico en Informática | 8h |
| 36 | 1.2.2 | **1.2.2. Montaje de Sistema de Alarma** | 0.5d | 2019-01-14 09:00 | 2019-01-14 13:00 | 34SS | 19.5d |  |  |  | 4h |
| 37 | 1.2.2.1 | 1.2.2.1 Instalación del sistema de alarma | 4h | 2019-01-14 09:00 | 2019-01-14 13:00 |  | 19.5d |  | start no earlier than 2014-06-16 09:00 | Oficial 1 Informatica | 4h |
| 38 | 1.2.3 | **1.3.2. Montaje de sistema multimedia** | 8.5d | 2019-01-14 09:00 | 2019-01-23 17:00 | 34SS | 11.5d |  |  |  | 126h |
| 39 | 1.2.3.1 | 1.3.2.1 Instalacion de rack y pizarra acrilica para proyector multimedia | 24h | 2019-01-14 09:00 | 2019-01-16 19:00 |  | 11.5d | 0d | start no earlier than 2014-06-17 09:00 | Operario 1 Informatica; Peón 1 Informatica | 48h |
| 40 | 1.2.3.2 | 1.3.2.2 Instalacion de canaletas, caja cuadrada y cable HDMI | 18h | 2019-01-17 09:00 | 2019-01-19 10:00 | 39 | 11.5d | 0d |  | Operario 1 Informatica; Peón 1 Informatica | 36h |
| 41 | 1.2.3.3 | 1.3.2.3 Montaje de proyector multimedia | 16h | 2019-01-19 10:00 | 2019-01-22 13:00 | 40 | 11.5d | 0d |  | Operario 1 Informatica; Peón 1 Informatica | 32h |
| 42 | 1.2.3.4 | 1.3.2.4 Revision y pruebas de multimedia | 10h | 2019-01-22 15:00 | 2019-01-23 17:00 | 41 | 11.5d |  |  | Ing. de Sistemas e Informatica | 10h |
