# II.EE. JOSE MARIA FLORES

Schedule from MS Project, 2019-01-28 to 2019-02-01.
GRA

## Calendars

- TIC_Chincheros: Mon-Fri 09:00-13:00, 15:00-19:00; Sat 08:00-14:00; Sun off.

## Resources

| Resource | Notes |
| --- | --- |
| Ing. de Sistemas e Informatica | Jefe Cuadrilla Informática, compuesto por 7 trabajadores. |
| Técnico en Informática |  |
| Oficial 1 Informatica |  |
| Operario 1 Informatica |  |
| Peón 1 Informatica |  |
| Peón 2 Informatica |  |
| Peón 3 Informatica |  |
| Ing.Electricista | Jefe Cuadrilla Electricista, compuesto por 7 trabajadores. |
| Técnico Electricista |  |
| Oficial 1 Electricista |  |
| Operario 1 Electricista |  |
| Peón 1 Electricista |  |
| Peón 2 Electricista |  |
| Peón 3 Electricista |  |
| Especialista configuración de Servidores | Jefe responsable de la instalación y configuración del Servidor, debe garantizar la interconectividad entre el servidor, access point y equipos portátiles. |
| Profesional Especialista |  |

## Schedule

| ID | WBS | Task | Duration | Start | Finish | Predecessors | Total slack | Free slack | Constraint | Resources | Work |
| --- | --- | --- | --- | --- | --- | --- | --- | --- | --- | --- | --- |
| 1 | 1 | **II.EE. JOSE MARIA FLORES** | 5d | 2019-01-28 09:00 | 2019-02-01 19:00 |  |  |  |  |  | 316h |
| 2 | 1.1 | **INSTALACION ELECTRICA Y REDES DE COMUNICACIÓN** | 3.88d | 2019-01-28 09:00 | 2019-01-31 18:00 |  | 1.12d |  |  |  | 210h |
| 3 | 1.1.1 | **1.12.2 Montaje de trabajos preliminares** | 0.62d | 2019-01-28 09:00 | 2019-01-28 16:00 |  | 4.38d | 0d |  |  | 10h |
| 4 | 1.1.1.1 | 1.12.2.1 Instalación de cartel de obra | 3h | 2019-01-28 09:00 | 2019-01-28 12:00 |  | 4.38d | 0d | start no earlier than 2014-07-23 09:00 | Operario 1 Electricista; Peón 1 Electricista | 6h |
| 5 | 1.1.1.2 | 1.12.2.2 Instalación de placa recordatoria | 2h | 2019-01-28 12:00 | 2019-01-28 16:00 | 4 | 4.38d |  |  | Operario 1 Electricista; Peón 1 Electricista | 4h |
| 6 | 1.1.2 | **1.10.2 Montaje de torre de elevación** | 2.75d | 2019-01-28 09:00 | 2019-01-30 17:00 | 3SS | 2.25d |  |  |  | 34h |
| 7 | 1.1.2.1 | 1.10.2.1 Excavación de Hoyo para la base de torre | 6h | 2019-01-28 09:00 | 2019-01-28 17:00 |  | 2.25d | 0d |  | Peón 2 Electricista | 6h |
| 8 | 1.1.2.2 | 1.10.2.2 Excavación de Hoyo para los anclajes de la torre | 4h | 2019-01-28 17:00 | 2019-01-29 11:00 | 7 | 2.25d | 0d |  | Peón 3 Electricista | 4h |
| 9 | 1.1.2.3 | 1.10.2.3 Encofrado de base ,anclaje y armado de estructura de fierro en forma de canastilla y vaciado | 4h | 2019-01-29 11:00 | 2019-01-29 17:00 | 8 | 2.25d | 0d |  | Oficial 1 Electricista; Peón 1 Electricista | 8h |
| 10 | 1.1.2.4 | 1.10.2.4 Ensamblaje de torre y accesorios | 1d | 2019-01-29 17:00 | 2019-01-30 17:00 | 9 | 2.25d |  |  | Operario 1 Electricista; Peón 2 Electricista | 16h |
| 11 | 1.1.3 | **1.4.2. Instalación de la red de comunicaciones** | 3.88d | 2019-01-28 09:00 | 2019-01-31 18:00 | 3SS | 1.12d |  |  |  | 62h |
| 12 | 1.1.3.1 | 1.4.2.1 Instalacion de gabinete de comunicación | 3h | 2019-01-28 09:00 | 2019-01-28 12:00 |  | 1.12d | 0d |  | Operario 1 Informatica; Peón 1 Informatica | 6h |
| 13 | 1.1.3.2 | 1.4.2.2 Colocacion de tubos canaletas y cajas de paso | 8h | 2019-01-28 12:00 | 2019-01-29 12:00 | 12 | 1.12d | 0d |  | Oficial 1 Informatica; Peón 2 Informatica | 16h |
| 14 | 1.1.3.3 | 1.4.2.3 Instalación y conectorizacion de cable F/UTP | 12h | 2019-01-29 12:00 | 2019-01-30 18:00 | 13 | 1.12d | 0d |  | Oficial 1 Informatica; Operario 1 Informatica | 24h |
| 15 | 1.1.3.4 | 1.4.2.4 Montaje y configuracion de switch y Access Point | 8h | 2019-01-30 18:00 | 2019-01-31 18:00 | 14 | 1.12d |  |  | Profesional Especialista; Oficial 1 Informatica | 16h |
| 16 | 1.1.4 | **1.8.2 Montaje de circuito y tablero electrico** | 1d | 2019-01-28 09:00 | 2019-01-28 19:00 | 3SS | 2.5d | 0d |  |  | 24h |
| 17 | 1.1.4.1 | 1.8.2.1 Instalación del circuito electrico para el servidor - estacion de carga de laptop | 1d | 2019-01-28 09:00 | 2019-01-28 19:00 |  | 2.5d |  |  | Operario 1 Electricista; Peón 3 Electricista | 16h |
| 18 | 1.1.4.2 | 1.8.2.2 Instalacion de tablero metálico | 4h | 2019-01-28 09:00 | 2019-01-28 13:00 |  | 3d |  |  | Operario 1 Electricista; Peón 2 Electricista | 8h |
| 19 | 1.1.5 | **1.9.2 Montaje de circuito electrico para proyectores** | 1.5d | 2019-01-29 09:00 | 2019-01-30 13:00 | 16 | 2.5d |  |  |  | 24h |
| 20 | 1.1.5.1 | 1.9.2.1 Montaje de circuito eléctrico para proyectores | 12h | 2019-01-29 09:00 | 2019-01-30 13:00 |  | 2.5d |  |  | Peón 1 Electricista; Operario 1 Electricista | 24h |
| 21 | 1.1.6 | **1.6.2 Montaje de puesta a tierra para pararayos** | 1.75d | 2019-01-28 09:00 | 2019-01-29 17:00 | 3SS | 1.25d | 0d |  |  | 26h |
| 22 | 1.1.6.1 | 1.6.2.1 Excavación de Hoyo para Puesta a Tierra | 4h | 2019-01-28 09:00 | 2019-01-28 13:00 |  | 1.25d | 0d |  | Operario 1 Electricista; Peón 1 Electricista | 8h |
| 23 | 1.1.6.2 | 1.6.2.2 Relleno y compactacion para puesta a tierra | 4h | 2019-01-28 15:00 | 2019-01-28 19:00 | 22 | 1.25d | 0d |  | Operario 1 Electricista; Peón 2 Electricista | 8h |
| 24 | 1.1.6.3 | 1.6.2.3 Instalación del Sistema de Puesta a Tierra | 4h | 2019-01-29 09:00 | 2019-01-29 13:00 | 23 | 1.25d | 0d |  | Operario 1 Electricista; Peón 2 Electricista | 8h |
| 25 | 1.1.6.4 | 1.6.2.4 Revisión y pruebas eléctricas | 2h | 2019-01-29 15:00 | 2019-01-29 17:00 | 24 | 1.25d |  |  | Ing.Electricista | 2h |

| ID | WBS | Task | Duration | Start | Finish | Predecessors | Total slack | Free slack | Constraint | Resources | Work |
| --- | --- | --- | --- | --- | --- | --- | --- | --- | --- | --- | --- |
| 26 | 1.1.7 | **1.7.2. Montaje de puesta a tierra para el Servidor** | 2d | 2019-01-29 17:00 | 2019-01-31 17:00 | 21 | 1.25d |  |  |  | 30h |
| 27 | 1.1.7.1 | 1.7.2.1 Excavación de Hoyo para Puesta a Tierra | 4h | 2019-01-29 17:00 | 2019-01-30 11:00 |  | 1.25d | 0d |  | Operario 1 Electricista; Peón 1 Electricista | 8h |
| 28 | 1.1.7.2 | 1.7.2.2 Relleno y compactacion para puesta a tierra | 4h | 2019-01-30 11:00 | 2019-01-30 17:00 | 27 | 1.25d | 0d |  | Operario 1 Electricista; Peón 2 Electricista | 8h |
| 29 | 1.1.7.3 | 1.7.2.3 Instalación del Sistema de Puesta a Tierra | 4h | 2019-01-30 17:00 | 2019-01-31 11:00 | 28 | 1.25d | 0d |  | Operario 1 Electricista; Peón 1 Electricista | 8h |
| 30 | 1.1.7.4 | 1.7.2.4 Instalación de conductor desde puesta a tierra a tablero principal | 2h | 2019-01-31 11:00 | 2019-01-31 13:00 | 29 | 1.25d | 0d |  | Operario 1 Electricista; Peón 2 Electricista | 4h |
| 31 | 1.1.7.5 | 1.7.2.5 Revisión y pruebas eléctricas | 2h | 2019-01-31 15:00 | 2019-01-31 17:00 | 30 | 1.25d |  |  | Ing.Electricista | 2h |
| 32 | 1.2 | **MONTAJE Y CONFIGURACION** | 4.25d | 2019-01-28 09:00 | 2019-02-01 11:00 |  | 0.75d |  |  |  | 106h |
| 33 | 1.2.1 | **1.1.2 MONTAJE Y CONFIGURACION DE EQUIPOS DE COMPUTO** | 2d | 2019-01-28 09:00 | 2019-01-29 19:00 |  | 0.75d |  |  |  | 40h |
| 34 | 1.2.1.1 | 1.1.2.1 Configuración de computadoras portatiles | 16h | 2019-01-28 09:00 | 2019-01-29 19:00 |  | 0.75d | 0d | start no earlier than 2014-07-23 09:00 | Operario 1 Informatica; Técnico en Informática | 32h |
| 35 | 1.2.1.2 | 1.1.2.2 Acondicionamiento y montaje de servidor | 4h | 2019-01-28 09:00 | 2019-01-28 13:00 | 34SS | 4.5d |  | start no earlier than 2014-06-17 09:00 | Operario 1 Informatica; Técnico en Informática | 8h |
| 36 | 1.2.2 | **1.2.2. Montaje de Sistema de Alarma** | 0.5d | 2019-01-28 09:00 | 2019-01-28 13:00 | 34SS | 4.5d |  |  |  | 4h |
| 37 | 1.2.2.1 | 1.2.2.1 Instalación del sistema de alarma | 4h | 2019-01-28 09:00 | 2019-01-28 13:00 |  | 4.5d |  | start no earlier than 2014-06-17 09:00 | Oficial 1 Informatica | 4h |
| 38 | 1.2.3 | **1.3.2. Montaje de sistema multimedia** | 4.25d | 2019-01-28 09:00 | 2019-02-01 11:00 | 34SS | 0.75d |  |  |  | 62h |
| 39 | 1.2.3.1 | 1.3.2.1 Instalacion de rack y pizarra acrilica para proyector multimedia | 8h | 2019-01-28 09:00 | 2019-01-28 19:00 |  | 0.75d | 0d | start no earlier than 2014-06-17 09:00 | Operario 1 Informatica; Peón 1 Informatica | 16h |
| 40 | 1.2.3.2 | 1.3.2.2 Instalacion de canaletas, caja cuadrada y cable HDMI | 12h | 2019-01-29 09:00 | 2019-01-30 13:00 | 39 | 0.75d | 0d |  | Operario 1 Informatica; Peón 1 Informatica | 24h |
| 41 | 1.2.3.3 | 1.3.2.3 Montaje de proyector multimedia | 8h | 2019-01-30 15:00 | 2019-01-31 13:00 | 40 | 0.75d | 0d |  | Operario 1 Informatica; Peón 1 Informatica | 16h |
| 42 | 1.2.3.4 | 1.3.2.4 Revision y pruebas de multimedia | 6h | 2019-01-31 15:00 | 2019-02-01 11:00 | 41 | 0.75d |  |  | Ing. de Sistemas e Informatica | 6h |
