# II.EE. CULLUNI IZQUIERDO

Schedule from MS Project, 2019-01-14 to 2019-01-31.
GRA

## Calendars

- TIC_Chincheros: Mon-Fri 09:00-13:00, 15:00-19:00; Sat 08:00-14:00; Sun off.

## Resources

| Resource | Notes |
| --- | --- |
| Ing. de Sistemas e Informatica | Jefe Cuadrilla Informática, compuesto por 7 trabajadores. |
| Especialista configuración de Servidores | Jefe responsable de la instalación y configuración del Servidor, debe garantizar la interconectividad entre el servidor, access point y equipos portátiles. |
| Profesional Especialista |  |

## Schedule

| ID | WBS | Task | Duration | Start | Finish | Predecessors | Total slack | Free slack | Constraint | Resources | Work |
| --- | --- | --- | --- | --- | --- | --- | --- | --- | --- | --- | --- |
| 1 | 1 | **II.EE. CULLUNI IZQUIERDO** | 15d | 2019-01-14 09:00 | 2019-01-31 13:00 |  |  |  |  |  | 7h |
| 2 | 1.1 | **INSTALACION ELECTRICA Y REDES DE COMUNICACIÓN** | 3.75d | 2019-01-14 09:00 | 2019-01-17 17:00 |  | 11.25d |  |  |  | 4h |
| 3 | 1.1.1 | **1.12.2 Montaje de trabajos preliminares** | 0.62d | 2019-01-14 09:00 | 2019-01-14 16:00 |  | 14.38d | 0d |  |  |  |
| 4 | 1.1.1.1 | 1.12.2.1 Instalación de cartel de obra | 3h | 2019-01-14 09:00 | 2019-01-14 12:00 |  | 14.38d | 0d | start no earlier than 2014-06-16 09:00 |  |  |
| 5 | 1.1.1.2 | 1.12.2.2 Instalación de placa recordatoria | 2h | 2019-01-14 12:00 | 2019-01-14 16:00 | 4 | 14.38d |  |  |  |  |
| 6 | 1.1.2 | **1.10.2 Montaje de torre de elevación** | 2.75d | 2019-01-14 09:00 | 2019-01-16 17:00 | 3SS | 12.25d |  |  |  |  |
| 7 | 1.1.2.1 | 1.10.2.1 Excavación de Hoyo para la base de torre | 6h | 2019-01-14 09:00 | 2019-01-14 17:00 |  | 12.25d | 0d |  |  |  |
| 8 | 1.1.2.2 | 1.10.2.2 Excavación de Hoyo para los anclajes de la torre | 4h | 2019-01-14 17:00 | 2019-01-15 11:00 | 7 | 12.25d | 0d |  |  |  |
| 9 | 1.1.2.3 | 1.10.2.3 Encofrado de base ,anclaje y armado de estructura de fierro en forma de canastilla y vaciado | 4h | 2019-01-15 11:00 | 2019-01-15 17:00 | 8 | 12.25d | 0d |  |  |  |
| 10 | 1.1.2.4 | 1.10.2.4 Ensamblaje de torre y accesorios | 1d | 2019-01-15 17:00 | 2019-01-16 17:00 | 9 | 12.25d |  |  |  |  |
| 11 | 1.1.3 | **1.4.2. Instalación de la red de comunicaciones** | 2.38d | 2019-01-14 09:00 | 2019-01-16 12:00 | 3SS | 12.62d |  |  |  | 4h |
| 12 | 1.1.3.1 | 1.4.2.1 Instalacion de gabinete de comunicación | 3h | 2019-01-14 09:00 | 2019-01-14 12:00 |  | 12.62d | 0d |  |  |  |
| 13 | 1.1.3.2 | 1.4.2.2 Colocacion de tubos canaletas y cajas de paso | 8h | 2019-01-14 12:00 | 2019-01-15 12:00 | 12 | 12.62d | 0d |  |  |  |
| 14 | 1.1.3.3 | 1.4.2.3 Instalación y conectorizacion de cable F/UTP | 4h | 2019-01-15 12:00 | 2019-01-15 18:00 | 13 | 12.62d | 0d |  |  |  |
| 15 | 1.1.3.4 | 1.4.2.4 Montaje y configuracion de switch y Access Point | 4h | 2019-01-15 18:00 | 2019-01-16 12:00 | 14 | 12.62d |  |  | Profesional Especialista | 4h |
| 16 | 1.1.4 | **1.8.2 Montaje de circuito y tablero electrico** | 1d | 2019-01-14 09:00 | 2019-01-14 19:00 | 3SS | 13.25d | 0d |  |  |  |
| 17 | 1.1.4.1 | 1.8.2.1 Instalación del circuito electrico para el servidor - estacion de carga de laptop | 1d | 2019-01-14 09:00 | 2019-01-14 19:00 |  | 13.25d |  |  |  |  |
| 18 | 1.1.4.2 | 1.8.2.2 Instalacion de tablero metálico | 4h | 2019-01-14 09:00 | 2019-01-14 13:00 |  | 13.75d |  |  |  |  |
| 19 | 1.1.5 | **1.9.2 Montaje de circuito electrico para proyectores** | 0.75d | 2019-01-15 09:00 | 2019-01-15 17:00 | 16 | 13.25d |  |  |  |  |
| 20 | 1.1.5.1 | 1.9.2.1 Montaje de circuito eléctrico para proyectores | 6h | 2019-01-15 09:00 | 2019-01-15 17:00 |  | 13.25d |  |  |  |  |
| 21 | 1.1.6 | **1.6.2 Montaje de puesta a tierra para pararayos** | 1.75d | 2019-01-14 09:00 | 2019-01-15 17:00 | 3SS | 11.25d | 0d |  |  |  |
| 22 | 1.1.6.1 | 1.6.2.1 Excavación de Hoyo para Puesta a Tierra | 4h | 2019-01-14 09:00 | 2019-01-14 13:00 |  | 11.25d | 0d |  |  |  |
| 23 | 1.1.6.2 | 1.6.2.2 Relleno y compactacion para puesta a tierra | 4h | 2019-01-14 15:00 | 2019-01-14 19:00 | 22 | 11.25d | 0d |  |  |  |
| 24 | 1.1.6.3 | 1.6.2.3 Instalación del Sistema de Puesta a Tierra | 4h | 2019-01-15 09:00 | 2019-01-15 13:00 | 23 | 11.25d | 0d |  |  |  |
| 25 | 1.1.6.4 | 1.6.2.4 Revisión y pruebas eléctricas | 2h | 2019-01-15 15:00 | 2019-01-15 17:00 | 24 | 11.25d |  |  |  |  |

| ID | WBS | Task | Duration | Start | Finish | Predecessors | Total slack | Free slack | Constraint | Resources | Work |
| --- | --- | --- | --- | --- | --- | --- | --- | --- | --- | --- | --- |
| 26 | 1.1.7 | **1.7.2. Montaje de puesta a tierra para el Servidor** | 2d | 2019-01-15 17:00 | 2019-01-17 17:00 | 21 | 11.25d |  |  |  |  |
| 27 | 1.1.7.1 | 1.7.2.1 Excavación de Hoyo para Puesta a Tierra | 4h | 2019-01-15 17:00 | 2019-01-16 11:00 |  | 11.25d | 0d |  |  |  |
| 28 | 1.1.7.2 | 1.7.2.2 Relleno y compactacion para puesta a tierra | 4h | 2019-01-16 11:00 | 2019-01-16 17:00 | 27 | 11.25d | 0d |  |  |  |
| 29 | 1.1.7.3 | 1.7.2.3 Instalación del Sistema de Puesta a Tierra | 4h | 2019-01-16 17:00 | 2019-01-17 11:00 | 28 | 11.25d | 0d |  |  |  |
| 30 | 1.1.7.4 | 1.7.2.4 Instalación de conductor desde puesta a tierra a tablero principal | 2h | 2019-01-17 11:00 | 2019-01-17 13:00 | 29 | 11.25d | 0d |  |  |  |
| 31 | 1.1.7.5 | 1.7.2.5 Revisión y pruebas eléctricas | 2h | 2019-01-17 15:00 | 2019-01-17 17:00 | 30 | 11.25d |  |  |  |  |
| 32 | 1.2 | **MONTAJE Y CONFIGURACION** | 2d | 2019-01-14 09:00 | 2019-01-15 19:00 |  | 13d |  |  |  | 3h |
| 33 | 1.2.1 | **1.1.2 MONTAJE Y CONFIGURACION DE EQUIPOS DE COMPUTO** | 0.75d | 2019-01-14 09:00 | 2019-01-14 17:00 |  | 13d |  |  |  |  |
| 34 | 1.2.1.1 | 1.1.2.1 Configuración de computadoras portatiles | 6h | 2019-01-14 09:00 | 2019-01-14 17:00 |  | 13d | 0d | start no earlier than 2014-07-01 09:00 |  |  |
| 35 | 1.2.1.2 | 1.1.2.2 Acondicionamiento y montaje de servidor | 4h | 2019-01-14 09:00 | 2019-01-14 13:00 | 34SS | 14.5d |  | start no earlier than 2014-06-17 09:00 |  |  |
| 36 | 1.2.2 | **1.2.2. Montaje de Sistema de Alarma** | 0.5d | 2019-01-14 09:00 | 2019-01-14 13:00 | 34SS | 14.5d |  |  |  |  |
| 37 | 1.2.2.1 | 1.2.2.1 Instalación del sistema de alarma | 4h | 2019-01-14 09:00 | 2019-01-14 13:00 |  | 14.5d |  | start no earlier than 2014-06-17 09:00 |  |  |
| 38 | 1.2.3 | **1.3.2. Montaje de sistema multimedia** | 2d | 2019-01-14 09:00 | 2019-01-15 19:00 | 34SS | 13d |  |  |  | 3h |
| 39 | 1.2.3.1 | 1.3.2.1 Instalacion de rack y pizarra acrilica para proyector multimedia | 6h | 2019-01-14 09:00 | 2019-01-14 17:00 |  | 13d | 0d | start no earlier than 2014-06-17 09:00 |  |  |
| 40 | 1.2.3.2 | 1.3.2.2 Instalacion de canaletas, caja cuadrada y cable HDMI | 4h | 2019-01-14 17:00 | 2019-01-15 11:00 | 39 | 13d | 0d |  |  |  |
| 41 | 1.2.3.3 | 1.3.2.3 Montaje de proyector multimedia | 3h | 2019-01-15 11:00 | 2019-01-15 16:00 | 40 | 13d | 0d |  |  |  |
| 42 | 1.2.3.4 | 1.3.2.4 Revision y pruebas de multimedia | 3h | 2019-01-15 16:00 | 2019-01-15 19:00 | 41 | 13d |  |  | Ing. de Sistemas e Informatica | 3h |
