# II.EE. JUANA AMBIA LUDEÑA

Schedule from MS Project, 2019-01-07 to 2019-01-28, scheduled back from the finish.
GRA

## Calendars

- TIC_Chincheros: Mon-Fri 09:00-13:00, 15:00-19:00; Sat 08:00-14:00; Sun off. Exceptions (off unless hours are given): 2019-01-07 to 2019-01-28 (Dia Trabajo, recurring).

## Resources

| Resource | Notes |
| --- | --- |
| Ing. de Sistemas e Informatica | Jefe Cuadrilla Informática, compuesto por 7 trabajadores. |
| Técnico en Informática |  |
| Oficial 1 Informatica |  |
| Operario 1 Informatica |  |
| Peón 1 Informatica |  |
| Peón 2 Informatica |  |
| Peón 3 Informatica |  |
| Ing.Electricista | Jefe Cuadrilla Electricista, compuesto por 7 trabajadores. |
| Técnico Electricista |  |
| Oficial 1 Electricista |  |
| Operario 1 Electricista |  |
| Peón 1 Electricista |  |
| Peón 2 Electricista |  |
| Peón 3 Electricista |  |
| Especialista configuración de Servidores | Jefe responsable de la instalación y configuración del Servidor, debe garantizar la interconectividad entre el servidor, access point y equipos portátiles. |
| Profesional Especialista |  |

## Schedule

| ID | WBS | Task | Duration | Start | Finish | Predecessors | Total slack | Free slack | Constraint | Resources | Work |
| --- | --- | --- | --- | --- | --- | --- | --- | --- | --- | --- | --- |
| 1 | 1 | **II.EE. JUANA AMBIA LUDEÑA** | 17.25d | 2019-01-07 09:00 | 2019-01-28 17:00 |  |  |  | as late as possible |  | 223h |
| 2 | 1.1 | **INSTALACION ELECTRICA Y REDES DE COMUNICACIÓN** | 3.75d | 2019-01-07 09:00 | 2019-01-10 17:00 |  | 0d |  | as late as possible |  | 170h |
| 3 | 1.1.1 | **1.12.2 Montaje de trabajos preliminares** | 0.62d | 2019-01-07 09:00 | 2019-01-07 16:00 |  | 0d |  | as late as possible |  | 10h |
| 4 | 1.1.1.1 | 1.12.2.1 Instalación de cartel de obra | 3h | 2019-01-07 09:00 | 2019-01-07 12:00 |  | 0d |  | start no earlier than 2014-06-09 09:00 | Operario 1 Electricista; Peón 1 Electricista | 6h |
| 5 | 1.1.1.2 | 1.12.2.2 Instalación de placa recordatoria | 2h | 2019-01-07 12:00 | 2019-01-07 16:00 | 4 | 16.62d |  |  | Operario 1 Electricista; Peón 1 Electricista | 4h |
| 6 | 1.1.2 | **1.10.2 Montaje de torre de elevación** | 2.75d | 2019-01-07 09:00 | 2019-01-09 17:00 | 3SS | 0d |  | as late as possible |  | 34h |
| 7 | 1.1.2.1 | 1.10.2.1 Excavación de Hoyo para la base de torre | 6h | 2019-01-07 09:00 | 2019-01-07 17:00 |  | 14.5d | 0d |  | Peón 2 Electricista | 6h |
| 8 | 1.1.2.2 | 1.10.2.2 Excavación de Hoyo para los anclajes de la torre | 4h | 2019-01-07 17:00 | 2019-01-08 11:00 | 7 | 14.5d | 0d |  | Peón 3 Electricista | 4h |
| 9 | 1.1.2.3 | 1.10.2.3 Encofrado de base ,anclaje y armado de estructura de fierro en forma de canastilla y vaciado | 4h | 2019-01-08 11:00 | 2019-01-08 17:00 | 8 | 14.5d | 0d |  | Oficial 1 Electricista; Peón 1 Electricista | 8h |
| 10 | 1.1.2.4 | 1.10.2.4 Ensamblaje de torre y accesorios | 1d | 2019-01-08 17:00 | 2019-01-09 17:00 | 9 | 14.5d |  |  | Operario 1 Electricista; Peón 2 Electricista | 16h |
| 11 | 1.1.3 | **1.4.2. Instalación de la red de comunicaciones** | 2.12d | 2019-01-07 09:00 | 2019-01-09 10:00 | 3SS | 0d |  | as late as possible |  | 34h |
| 12 | 1.1.3.1 | 1.4.2.1 Instalacion de gabinete de comunicación | 3h | 2019-01-07 09:00 | 2019-01-07 12:00 |  | 15.12d | 0d |  | Operario 1 Informatica; Peón 1 Informatica | 6h |
| 13 | 1.1.3.2 | 1.4.2.2 Colocacion de tubos canaletas y cajas de paso | 6h | 2019-01-07 12:00 | 2019-01-08 10:00 | 12 | 15.12d | 0d |  | Oficial 1 Informatica; Peón 2 Informatica | 12h |
| 14 | 1.1.3.3 | 1.4.2.3 Instalación y conectorizacion de cable F/UTP | 4h | 2019-01-08 10:00 | 2019-01-08 16:00 | 13 | 15.12d | 0d |  | Oficial 1 Informatica; Operario 1 Informatica | 8h |
| 15 | 1.1.3.4 | 1.4.2.4 Montaje y configuracion de switch y Access Point | 4h | 2019-01-08 16:00 | 2019-01-09 10:00 | 14 | 15.12d |  |  | Profesional Especialista; Oficial 1 Informatica | 8h |
| 16 | 1.1.4 | **1.8.2 Montaje de circuito y tablero electrico** | 1d | 2019-01-07 09:00 | 2019-01-07 19:00 | 3SS | 0d |  | as late as possible |  | 24h |
| 17 | 1.1.4.1 | 1.8.2.1 Instalación del circuito electrico para el servidor - estacion de carga de laptop | 1d | 2019-01-07 09:00 | 2019-01-07 19:00 |  | 15.5d |  |  | Operario 1 Electricista; Peón 3 Electricista | 16h |
| 18 | 1.1.4.2 | 1.8.2.2 Instalacion de tablero metálico | 4h | 2019-01-07 09:00 | 2019-01-07 13:00 |  | 16d |  |  | Operario 1 Electricista; Peón 2 Electricista | 8h |
| 19 | 1.1.5 | **1.9.2 Montaje de circuito electrico para proyectores** | 0.75d | 2019-01-08 09:00 | 2019-01-08 17:00 | 16 | 0d |  | as late as possible |  | 12h |
| 20 | 1.1.5.1 | 1.9.2.1 Montaje de circuito eléctrico para proyectores | 6h | 2019-01-08 09:00 | 2019-01-08 17:00 |  | 15.5d |  |  | Peón 1 Electricista; Operario 1 Electricista | 12h |
| 21 | 1.1.6 | **1.6.2 Montaje de puesta a tierra para pararayos** | 1.75d | 2019-01-07 09:00 | 2019-01-08 17:00 | 3SS | 0d |  | as late as possible |  | 26h |
| 22 | 1.1.6.1 | 1.6.2.1 Excavación de Hoyo para Puesta a Tierra | 4h | 2019-01-07 09:00 | 2019-01-07 13:00 |  | 13.5d | 0d |  | Operario 1 Electricista; Peón 1 Electricista | 8h |
| 23 | 1.1.6.2 | 1.6.2.2 Relleno y compactacion para puesta a tierra | 4h | 2019-01-07 15:00 | 2019-01-07 19:00 | 22 | 13.5d | 0d |  | Operario 1 Electricista; Peón 2 Electricista | 8h |
| 24 | 1.1.6.3 | 1.6.2.3 Instalación del Sistema de Puesta a Tierra | 4h | 2019-01-08 09:00 | 2019-01-08 13:00 | 23 | 13.5d | 0d |  | Operario 1 Electricista; Peón 2 Electricista | 8h |
| 25 | 1.1.6.4 | 1.6.2.4 Revisión y pruebas eléctricas | 2h | 2019-01-08 15:00 | 2019-01-08 17:00 | 24 | 13.5d |  |  | Ing.Electricista | 2h |

| ID | WBS | Task | Duration | Start | Finish | Predecessors | Total slack | Free slack | Constraint | Resources | Work |
| --- | --- | --- | --- | --- | --- | --- | --- | --- | --- | --- | --- |
| 26 | 1.1.7 | **1.7.2. Montaje de puesta a tierra para el Servidor** | 2d | 2019-01-08 17:00 | 2019-01-10 17:00 | 21 | 0d |  | as late as possible |  | 30h |
| 27 | 1.1.7.1 | 1.7.2.1 Excavación de Hoyo para Puesta a Tierra | 4h | 2019-01-08 17:00 | 2019-01-09 11:00 |  | 13.5d | 0d |  | Operario 1 Electricista; Peón 1 Electricista | 8h |
| 28 | 1.1.7.2 | 1.7.2.2 Relleno y compactacion para puesta a tierra | 4h | 2019-01-09 11:00 | 2019-01-09 17:00 | 27 | 13.5d | 0d |  | Operario 1 Electricista; Peón 2 Electricista | 8h |
| 29 | 1.1.7.3 | 1.7.2.3 Instalación del Sistema de Puesta a Tierra | 4h | 2019-01-09 17:00 | 2019-01-10 11:00 | 28 | 13.5d | 0d |  | Operario 1 Electricista; Peón 1 Electricista | 8h |
| 30 | 1.1.7.4 | 1.7.2.4 Instalación de conductor desde puesta a tierra a tablero principal | 2h | 2019-01-10 11:00 | 2019-01-10 13:00 | 29 | 13.5d | 0d |  | Operario 1 Electricista; Peón 2 Electricista | 4h |
| 31 | 1.1.7.5 | 1.7.2.5 Revisión y pruebas eléctricas | 2h | 2019-01-10 15:00 | 2019-01-10 17:00 | 30 | 13.5d |  |  | Ing.Electricista | 2h |
| 32 | 1.2 | **MONTAJE Y CONFIGURACION** | 17.25d | 2019-01-07 09:00 | 2019-01-26 14:00 |  | 0d |  | as late as possible |  | 53h |
| 33 | 1.2.1 | **1.1.2 MONTAJE Y CONFIGURACION DE EQUIPOS DE COMPUTO** | 17.25d | 2019-01-07 09:00 | 2019-01-26 14:00 |  | 0d |  | as late as possible |  | 20h |
| 34 | 1.2.1.1 | 1.1.2.1 Configuración de computadoras portatiles | 6h | 2019-01-07 09:00 | 2019-01-07 17:00 |  | 0d |  | start no earlier than 2014-06-27 09:00 | Operario 1 Informatica; Técnico en Informática | 12h |
| 35 | 1.2.1.2 | 1.1.2.2 Acondicionamiento y montaje de servidor | 4h | 2019-01-26 10:00 | 2019-01-26 14:00 | 34SS | 16.75d | 0d | start no earlier than 2014-06-17 09:00 | Operario 1 Informatica; Técnico en Informática | 8h |
| 36 | 1.2.2 | **1.2.2. Montaje de Sistema de Alarma** | 0.5d | 2019-01-26 10:00 | 2019-01-26 14:00 | 34SS | 16.75d | 0d | as late as possible |  | 4h |
| 37 | 1.2.2.1 | 1.2.2.1 Instalación del sistema de alarma | 4h | 2019-01-26 10:00 | 2019-01-26 14:00 |  | 16.75d | 0d | start no earlier than 2014-06-17 09:00 | Oficial 1 Informatica | 4h |
| 38 | 1.2.3 | **1.3.2. Montaje de sistema multimedia** | 2d | 2019-01-07 09:00 | 2019-01-08 19:00 | 34SS | 0d |  | as late as possible |  | 29h |
| 39 | 1.2.3.1 | 1.3.2.1 Instalacion de rack y pizarra acrilica para proyector multimedia | 6h | 2019-01-07 09:00 | 2019-01-07 17:00 |  | 0d |  | start no earlier than 2014-06-17 09:00 | Operario 1 Informatica; Peón 1 Informatica | 12h |
| 40 | 1.2.3.2 | 1.3.2.2 Instalacion de canaletas, caja cuadrada y cable HDMI | 4h | 2019-01-07 17:00 | 2019-01-08 11:00 | 39 | 15.25d | 0d |  | Operario 1 Informatica; Peón 1 Informatica | 8h |
| 41 | 1.2.3.3 | 1.3.2.3 Montaje de proyector multimedia | 3h | 2019-01-08 11:00 | 2019-01-08 16:00 | 40 | 15.25d | 0d |  | Operario 1 Informatica; Peón 1 Informatica | 6h |
| 42 | 1.2.3.4 | 1.3.2.4 Revision y pruebas de multimedia | 3h | 2019-01-08 16:00 | 2019-01-08 19:00 | 41 | 15.25d |  |  | Ing. de Sistemas e Informatica | 3h |
