# II.EE. LEONCIO PRADO

Schedule from MS Project, 2018-12-31 to 2019-01-28.
GRA

## Calendars

- TIC_Chincheros: Mon-Fri 09:00-13:00, 15:00-19:00; Sat 08:00-14:00; Sun off.

## Resources

| Resource | Notes |
| --- | --- |
| Ing. de Sistemas e Informatica | Jefe Cuadrilla Informática, compuesto por 7 trabajadores. |
| Técnico en Informática |  |
| Oficial 1 Informatica |  |
| Operario 1 Informatica |  |
| Peón 1 Informatica |  |
| Peón 2 Informatica |  |
| Peón 3 Informatica |  |
| Ing.Electricista | Jefe Cuadrilla Electricista, compuesto por 7 trabajadores. |
| Técnico Electricista |  |
| Oficial 1 Electricista |  |
| Operario 1 Electricista |  |
| Peón 1 Electricista |  |
| Peón 2 Electricista |  |
| Peón 3 Electricista |  |
| Especialista configuración de Servidores | Jefe responsable de la instalación y configuración del Servidor, debe garantizar la interconectividad entre el servidor, access point y equipos portátiles. |
| Profesional Especialista |  |

## Schedule

| ID | WBS | Task | Duration | Start | Finish | Predecessors | Total slack | Free slack | Constraint | Resources | Work |
| --- | --- | --- | --- | --- | --- | --- | --- | --- | --- | --- | --- |
| 1 | 1 | **II.EE. LEONCIO PRADO** | 24d | 2018-12-31 09:00 | 2019-01-28 19:00 |  |  |  |  |  | 223h |
| 2 | 1.1 | **INSTALACION ELECTRICA Y REDES DE COMUNICACIÓN** | 3.75d | 2018-12-31 09:00 | 2019-01-03 17:00 |  | 20.25d |  |  |  | 170h |
| 3 | 1.1.1 | **1.12.2 Montaje de trabajos preliminares** | 0.62d | 2018-12-31 09:00 | 2018-12-31 16:00 |  | 23.38d | 0d |  |  | 10h |
| 4 | 1.1.1.1 | 1.12.2.1 Instalación de cartel de obra | 3h | 2018-12-31 09:00 | 2018-12-31 12:00 |  | 23.38d | 0d | start no earlier than 2014-06-02 09:00 | Operario 1 Electricista; Peón 1 Electricista | 6h |
| 5 | 1.1.1.2 | 1.12.2.2 Instalación de placa recordatoria | 2h | 2018-12-31 12:00 | 2018-12-31 16:00 | 4 | 23.38d |  |  | Operario 1 Electricista; Peón 1 Electricista | 4h |
| 6 | 1.1.2 | **1.10.2 Montaje de torre de elevación** | 2.75d | 2018-12-31 09:00 | 2019-01-02 17:00 | 3SS | 21.25d |  |  |  | 34h |
| 7 | 1.1.2.1 | 1.10.2.1 Excavación de Hoyo para la base de torre | 6h | 2018-12-31 09:00 | 2018-12-31 17:00 |  | 21.25d | 0d |  | Peón 2 Electricista | 6h |
| 8 | 1.1.2.2 | 1.10.2.2 Excavación de Hoyo para los anclajes de la torre | 4h | 2018-12-31 17:00 | 2019-01-01 11:00 | 7 | 21.25d | 0d |  | Peón 3 Electricista | 4h |
| 9 | 1.1.2.3 | 1.10.2.3 Encofrado de base ,anclaje y armado de estructura de fierro en forma de canastilla y vaciado | 4h | 2019-01-01 11:00 | 2019-01-01 17:00 | 8 | 21.25d | 0d |  | Oficial 1 Electricista; Peón 1 Electricista | 8h |
| 10 | 1.1.2.4 | 1.10.2.4 Ensamblaje de torre y accesorios | 1d | 2019-01-01 17:00 | 2019-01-02 17:00 | 9 | 21.25d |  |  | Operario 1 Electricista; Peón 2 Electricista | 16h |
| 11 | 1.1.3 | **1.4.2. Instalación de la red de comunicaciones** | 2.12d | 2018-12-31 09:00 | 2019-01-02 10:00 | 3SS | 21.88d |  |  |  | 34h |
| 12 | 1.1.3.1 | 1.4.2.1 Instalacion de gabinete de comunicación | 3h | 2018-12-31 09:00 | 2018-12-31 12:00 |  | 21.88d | 0d |  | Operario 1 Informatica; Peón 1 Informatica | 6h |
| 13 | 1.1.3.2 | 1.4.2.2 Colocacion de tubos canaletas y cajas de paso | 6h | 2018-12-31 12:00 | 2019-01-01 10:00 | 12 | 21.88d | 0d |  | Oficial 1 Informatica; Peón 2 Informatica | 12h |
| 14 | 1.1.3.3 | 1.4.2.3 Instalación y conectorizacion de cable F/UTP | 4h | 2019-01-01 10:00 | 2019-01-01 16:00 | 13 | 21.88d | 0d |  | Oficial 1 Informatica; Operario 1 Informatica | 8h |
| 15 | 1.1.3.4 | 1.4.2.4 Montaje y configuracion de switch y Access Point | 4h | 2019-01-01 16:00 | 2019-01-02 10:00 | 14 | 21.88d |  |  | Profesional Especialista; Oficial 1 Informatica | 8h |
| 16 | 1.1.4 | **1.8.2 Montaje de circuito y tablero electrico** | 1d | 2018-12-31 09:00 | 2018-12-31 19:00 | 3SS | 22.25d | 0d |  |  | 24h |
| 17 | 1.1.4.1 | 1.8.2.1 Instalación del circuito electrico para el servidor - estacion de carga de laptop | 1d | 2018-12-31 09:00 | 2018-12-31 19:00 |  | 22.25d |  |  | Operario 1 Electricista; Peón 3 Electricista | 16h |
| 18 | 1.1.4.2 | 1.8.2.2 Instalacion de tablero metálico | 4h | 2018-12-31 09:00 | 2018-12-31 13:00 |  | 22.75d |  |  | Operario 1 Electricista; Peón 2 Electricista | 8h |
| 19 | 1.1.5 | **1.9.2 Montaje de circuito electrico para proyectores** | 0.75d | 2019-01-01 09:00 | 2019-01-01 17:00 | 16 | 22.25d |  |  |  | 12h |
| 20 | 1.1.5.1 | 1.9.2.1 Montaje de circuito eléctrico para proyectores | 6h | 2019-01-01 09:00 | 2019-01-01 17:00 |  | 22.25d |  |  | Peón 1 Electricista; Operario 1 Electricista | 12h |
| 21 | 1.1.6 | **1.6.2 Montaje de puesta a tierra para pararayos** | 1.75d | 2018-12-31 09:00 | 2019-01-01 17:00 | 3SS | 20.25d | 0d |  |  | 26h |
| 22 | 1.1.6.1 | 1.6.2.1 Excavación de Hoyo para Puesta a Tierra | 4h | 2018-12-31 09:00 | 2018-12-31 13:00 |  | 20.25d | 0d |  | Operario 1 Electricista; Peón 1 Electricista | 8h |
| 23 | 1.1.6.2 | 1.6.2.2 Relleno y compactacion para puesta a tierra | 4h | 2018-12-31 15:00 | 2018-12-31 19:00 | 22 | 20.25d | 0d |  | Operario 1 Electricista; Peón 2 Electricista | 8h |
| 24 | 1.1.6.3 | 1.6.2.3 Instalación del Sistema de Puesta a Tierra | 4h | 2019-01-01 09:00 | 2019-01-01 13:00 | 23 | 20.25d | 0d |  | Operario 1 Electricista; Peón 2 Electricista | 8h |
| 25 | 1.1.6.4 | 1.6.2.4 Revisión y pruebas eléctricas | 2h | 2019-01-01 15:00 | 2019-01-01 17:00 | 24 | 20.25d |  |  | Ing.Electricista | 2h |

| ID | WBS | Task | Duration | Start | Finish | Predecessors | Total slack | Free slack | Constraint | Resources | Work |
| --- | --- | --- | --- | --- | --- | --- | --- | --- | --- | --- | --- |
| 26 | 1.1.7 | **1.7.2. Montaje de puesta a tierra para el Servidor** | 2d | 2019-01-01 17:00 | 2019-01-03 17:00 | 21 | 20.25d |  |  |  | 30h |
| 27 | 1.1.7.1 | 1.7.2.1 Excavación de Hoyo para Puesta a Tierra | 4h | 2019-01-01 17:00 | 2019-01-02 11:00 |  | 20.25d | 0d |  | Operario 1 Electricista; Peón 1 Electricista | 8h |
| 28 | 1.1.7.2 | 1.7.2.2 Relleno y compactacion para puesta a tierra | 4h | 2019-01-02 11:00 | 2019-01-02 17:00 | 27 | 20.25d | 0d |  | Operario 1 Electricista; Peón 2 Electricista | 8h |
| 29 | 1.1.7.3 | 1.7.2.3 Instalación del Sistema de Puesta a Tierra | 4h | 2019-01-02 17:00 | 2019-01-03 11:00 | 28 | 20.25d | 0d |  | Operario 1 Electricista; Peón 1 Electricista | 8h |
| 30 | 1.1.7.4 | 1.7.2.4 Instalación de conductor desde puesta a tierra a tablero principal | 2h | 2019-01-03 11:00 | 2019-01-03 13:00 | 29 | 20.25d | 0d |  | Operario 1 Electricista; Peón 2 Electricista | 4h |
| 31 | 1.1.7.5 | 1.7.2.5 Revisión y pruebas eléctricas | 2h | 2019-01-03 15:00 | 2019-01-03 17:00 | 30 | 20.25d |  |  | Ing.Electricista | 2h |
| 32 | 1.2 | **MONTAJE Y CONFIGURACION** | 2d | 2018-12-31 09:00 | 2019-01-01 19:00 |  | 22d |  |  |  | 53h |
| 33 | 1.2.1 | **1.1.2 MONTAJE Y CONFIGURACION DE EQUIPOS DE COMPUTO** | 0.75d | 2018-12-31 09:00 | 2018-12-31 17:00 |  | 22d |  |  |  | 20h |
| 34 | 1.2.1.1 | 1.1.2.1 Configuración de computadoras portatiles | 6h | 2018-12-31 09:00 | 2018-12-31 17:00 |  | 22d | 0d | start no earlier than 2014-06-27 09:00 | Operario 1 Informatica; Técnico en Informática | 12h |
| 35 | 1.2.1.2 | 1.1.2.2 Acondicionamiento y montaje de servidor | 4h | 2018-12-31 09:00 | 2018-12-31 13:00 | 34SS | 23.5d |  | start no earlier than 2014-06-17 09:00 | Operario 1 Informatica; Técnico en Informática | 8h |
| 36 | 1.2.2 | **1.2.2. Montaje de Sistema de Alarma** | 0.5d | 2018-12-31 09:00 | 2018-12-31 13:00 | 34SS | 23.5d |  |  |  | 4h |
| 37 | 1.2.2.1 | 1.2.2.1 Instalación del sistema de alarma | 4h | 2018-12-31 09:00 | 2018-12-31 13:00 |  | 23.5d |  | start no earlier than 2014-06-17 09:00 | Oficial 1 Informatica | 4h |
| 38 | 1.2.3 | **1.3.2. Montaje de sistema multimedia** | 2d | 2018-12-31 09:00 | 2019-01-01 19:00 | 34SS | 22d |  |  |  | 29h |
| 39 | 1.2.3.1 | 1.3.2.1 Instalacion de rack y pizarra acrilica para proyector multimedia | 6h | 2018-12-31 09:00 | 2018-12-31 17:00 |  | 22d | 0d | start no earlier than 2014-06-17 09:00 | Operario 1 Informatica; Peón 1 Informatica | 12h |
| 40 | 1.2.3.2 | 1.3.2.2 Instalacion de canaletas, caja cuadrada y cable HDMI | 4h | 2018-12-31 17:00 | 2019-01-01 11:00 | 39 | 22d | 0d |  | Operario 1 Informatica; Peón 1 Informatica | 8h |
| 41 | 1.2.3.3 | 1.3.2.3 Montaje de proyector multimedia | 3h | 2019-01-01 11:00 | 2019-01-01 16:00 | 40 | 22d | 0d |  | Operario 1 Informatica; Peón 1 Informatica | 6h |
| 42 | 1.2.3.4 | 1.3.2.4 Revision y pruebas de multimedia | 3h | 2019-01-01 16:00 | 2019-01-01 19:00 | 41 | 22d |  |  | Ing. de Sistemas e Informatica | 3h |
